# ISO_Road_Map

Schedule from MS Project, 2014-03-01 to 2014-07-03.

## Calendars

- Standard: Mon-Fri 08:00-12:00, 13:00-17:00; Sat-Sun off.

## Resources

| Resource |
| --- |
| Nabil Manzoor |
| Bilal Manzoor |
| Muhammad Afzal |
| Ahsan Rashid |

## Schedule

| ID | WBS | Task | Duration | Start | Finish | Predecessors | Total slack | Free slack |
| --- | --- | --- | --- | --- | --- | --- | --- | --- |
| 1 | 1 | **ISO 9001:2008 (QMS) Certification** | 90d | 2014-03-01 | 2014-07-03 |  |  |  |
| 2 | 1.1 | Resource allocation and Templates format | 1d? | 2014-03-03 | 2014-03-03 |  | 5d | 0d |
| 3 | 1.2 | Training Templates | 3d | 2014-03-04 | 2014-03-06 | 2 | 70d | 0d |
| 4 | 1.3 | QMS training to employees | 1d? | 2014-03-07 | 2014-03-07 | 3 | 70d | 0d |
| 5 | 1.4 | QMS Training Effectiveness | 1d? | 2014-03-10 | 2014-03-10 | 4 | 70d | 0d |
| 6 | 1.5 | Gap Analysis | 3d | 2014-03-11 | 2014-03-13 | 5 | 6d | 0d |
| 7 | 1.6 | Quality Policy | 1d? | 2014-03-14 | 2014-03-14 | 6 | 79d |  |
| 8 | 1.7 | Organizational Hierarchy | 1d | 2014-03-14 | 2014-03-14 | 6 | 71d | 0d |
| 9 | 1.8 | Job Description Manual | 8d | 2014-03-17 | 2014-03-26 | 8 | 71d |  |
| 10 | 1.9 | Workplains handbook | 5d | 2014-03-17 | 2014-03-21 | 8 | 74d |  |
| 11 | 1.10 | **Department Templates** | 64d | 2014-03-03 | 2014-05-29 | 6 |  |  |
| 12 | 1.10.1 | Software Development | 8d | 2014-03-03 | 2014-03-12 |  | 56d |  |
| 13 | 1.10.2 | Management Representative | 8d | 2014-03-03 | 2014-03-12 |  | 56d |  |
| 14 | 1.10.3 | Admin & Human Resource | 16d | 2014-03-03 | 2014-03-24 |  | 48d |  |
| 15 | 1.10.4 | Business Development | 8d | 2014-03-03 | 2014-03-12 |  | 56d |  |
| 16 | 1.10.5 | Quality Assurance | 8d | 2014-03-03 | 2014-03-12 |  | 56d |  |
| 17 | 1.10.6 | System Support & Networking | 8d | 2014-03-03 | 2014-03-12 |  | 56d |  |
| 18 | 1.10.7 | Customer Services | 8d | 2014-03-03 | 2014-03-12 |  | 56d |  |
| 19 | 1.11 | **Standard Operating Procedures** | 32d | 2014-03-03 | 2014-04-15 | 6 |  |  |
| 20 | 1.11.1 | Software Development | 4d | 2014-03-03 | 2014-03-06 |  | 28d |  |
| 21 | 1.11.2 | Management Representative | 4d | 2014-03-03 | 2014-03-06 |  | 28d |  |
| 22 | 1.11.3 | Admin & Human Resource | 8d | 2014-03-03 | 2014-03-12 |  | 24d |  |
| 23 | 1.11.4 | Business Development | 4d | 2014-03-03 | 2014-03-06 |  | 28d |  |
| 24 | 1.11.5 | Quality Assurance | 4d | 2014-03-03 | 2014-03-06 |  | 28d |  |
| 25 | 1.11.6 | System Support & Networking | 4d | 2014-03-03 | 2014-03-06 |  | 28d |  |
| 26 | 1.11.7 | Customer Services | 4d | 2014-03-03 | 2014-03-06 |  | 28d |  |

Notes:
- 1: Description: The top management should show commitment and determination to implement QMS in Workplains. Without top management commitment, no quality initiative can succeed.
- 2: Description: Selection of MR & other core team and finalization of Templates format.
- 3: Description: Creation of training templates for record purpose.
- 4: Description: Awareness training for all the employees of Workplains.
- 5: Description: To check how effective QMS training was.
- 6: Description: Must identify and list where things currently stand in Workplains.
- 7: Description: Top management's expression of its intentions, direction, and aims regarding quality of its products and processes.
- 11: Description: Forms/Templates
- 19: Description: SOP's - start to fill in when completed

| ID | WBS | Task | Duration | Start | Finish | Predecessors | Total slack | Free slack |
| --- | --- | --- | --- | --- | --- | --- | --- | --- |
| 27 | 1.12 | **Quality Procedures** | 18d | 2014-03-03 | 2014-03-26 | 6 |  |  |
| 28 | 1.12.1 | Control of documents | 3d | 2014-03-03 | 2014-03-05 |  | 15d |  |
| 29 | 1.12.2 | Control of records | 3d | 2014-03-03 | 2014-03-05 |  | 15d |  |
| 30 | 1.12.3 | Internal Audit | 3d | 2014-03-03 | 2014-03-05 |  | 15d |  |
| 31 | 1.12.4 | Control of non-conforming products | 3d | 2014-03-03 | 2014-03-05 |  | 15d |  |
| 32 | 1.12.5 | Corrective Action | 3d | 2014-03-03 | 2014-03-05 |  | 15d |  |
| 33 | 1.12.6 | Preventive Action | 3d | 2014-03-03 | 2014-03-05 |  | 15d |  |
| 34 | 1.13 | Quality Manual | 5d | 2014-03-06 | 2014-03-12 | 33 | 70d | 0d |
| 35 | 1.14 | Quality Objectives | 2d | 2014-03-13 | 2014-03-14 | 34 | 70d | 0d |
| 36 | 1.15 | Management Meeting | 1d? | 2014-03-17 | 2014-03-17 | 35 | 70d | 0d |
| 37 | 1.16 | QMS training to employees | 1d? | 2014-03-18 | 2014-03-18 | 36 | 70d | 0d |
| 38 | 1.17 | Internal Auditors | 1d? | 2014-03-19 | 2014-03-19 | 37 | 70d | 0d |
| 39 | 1.18 | Conduct Internal Audit | 1d? | 2014-03-20 | 2014-03-20 | 38 | 70d | 0d |
| 40 | 1.19 | Internal Audit follow-up | 1d? | 2014-03-21 | 2014-03-21 | 39 | 70d | 0d |
| 41 | 1.20 | Management Review Meeting | 1d? | 2014-03-24 | 2014-03-24 | 40 | 70d | 0d |
| 42 | 1.21 | Apply for certification audit | 1d? | 2014-03-25 | 2014-03-25 | 41 | 70d | 0d |
| 43 | 1.22 | Pre-assessment audit | 1d? | 2014-03-26 | 2014-03-26 | 42 | 70d | 0d |
| 44 | 1.23 | Certification Audit | 1d? | 2014-03-27 | 2014-03-27 | 43 | 70d |  |
| 45 | 1.24 | Continual Improvement | 1d? | 2014-03-03 | 2014-03-03 |  | 88d |  |
| 46 | 1.25 | Surveillance audits | 1d? | 2014-03-03 | 2014-03-03 |  | 88d |  |

Notes:
- 27: Description: Mandatory by ISO standard
- 34: Description: It includes the Workplains quality policy and goals, as well as a detailed description of its quality control system.
- 35: Description: Should be SMART
- 36: Description: About the completion of procedures/templates.
- 37: Description: Training to all the employees about the completion of ISO template/procedures.
- 38: Description: Selection and training of internal auditors.
- 39: Description: Plan and conduct internal audit.
- 40: Description: Fixes of issues rasied during internal audit.
- 41: Description: Conduct after internal quality audit to review Workplains QMS.
- 42: Description: Give application for ISO 9001:2008 certification audit.
- 43: Description: To ensure Workplains is ready to proceed with the full certification audit. Essentially, the pre-assessment audit is a dress rehearsal.
- 44: Description: If certification body feels that Workplains QMS is conforming to ISO 9001:2008 requirements, it awards certificate for a period of three years.
- 45: Description: Getting certification to ISO 9001:2008 should not be an end.
- 46: Description: Conduct every year by certification body.
